# Bouwplanning v1.0

Schedule from an IFC model, 2027-03-01 to 2027-09-06.
Renovation of De Regenboog Primary School

## Schedule

| ID | Activity | Type | Duration | Start | Finish | Predecessors | Planned start | Planned finish | Total float | Free float |
| --- | --- | --- | --- | --- | --- | --- | --- | --- | --- | --- |
| 1 | **1. Preparation** |  | 5d | 2027-03-01 | 2027-03-16 |  | 2027-03-01 | 2027-03-05 | 0d |  |
| 1.1 | Asbestos survey |  | 3d | 2027-03-01 | 2027-03-03 |  |  |  | 0d |  |
| 1.2 | Set up temporary accommodation |  | 5d | 2027-03-04 | 2027-03-10 | 1.1 | 2027-03-01 | 2027-03-05 | 103d | 0d |
| 1.3 | Set up site |  | 3d | 2027-03-11 | 2027-03-15 | 1.2 | 2027-03-01 | 2027-03-03 | 103d | 0d |
| 1.4 | Start of renovation | milestone | 0d | 2027-03-16 | 2027-03-16 | 1.3 | 2027-03-01 | 2027-03-01 | 103d |  |
| 2 | **2. Demolition & strip-out** |  | 5d | 2027-03-09 | 2027-04-15 |  | 2027-03-01 | 2027-03-05 | 0d |  |
| 2.1 | Asbestos removal |  | 5d | 2027-03-09 | 2027-03-15 | 1.1 SS+6d | 2027-03-01 | 2027-03-05 | 0d |  |
| 2.2 | Strip out interior |  | 8d | 2027-03-16 | 2027-03-25 | 2.1 | 2027-03-01 | 2027-03-10 | 83d | 0d |
| 2.3 | Demolish internal walls |  | 5d | 2027-03-30 | 2027-04-05 | 2.2 | 2027-03-01 | 2027-03-05 | 83d | 0d |
| 2.4 | Remove roofing |  | 5d | 2027-04-06 | 2027-04-12 | 2.3 | 2027-03-01 | 2027-03-05 | 83d | 0d |
| 2.5 | Remove window frames |  | 3d | 2027-04-13 | 2027-04-15 | 2.4 | 2027-03-01 | 2027-03-03 | 83d |  |
| 3 | **3. Structural works** |  | 5d | 2027-03-11 | 2027-04-29 |  | 2027-03-01 | 2027-03-05 | 0d |  |
| 3.1 | Foundation repair |  | 5d | 2027-03-11 | 2027-03-17 | 2.1 SS | 2027-03-01 | 2027-03-05 | 0d |  |
| 3.2 | Structural steel strengthening |  | 8d | 2027-03-18 | 2027-03-31 | 3.1 | 2027-03-01 | 2027-03-10 | 0d |  |
| 3.3 | New roof structure |  | 10d | 2027-04-01 | 2027-04-14 | 3.2 | 2027-03-01 | 2027-03-12 | 0d |  |
| 3.4 | Extension masonry |  | 10d | 2027-04-15 | 2027-04-29 | 3.3 | 2027-03-01 | 2027-03-12 | 0d |  |
| 4 | **4. Facade & roof** |  | 5d | 2027-04-20 | 2027-05-31 |  | 2027-03-01 | 2027-03-05 | 0d |  |
| 4.1 | External facade insulation |  | 10d | 2027-04-20 | 2027-05-04 | 3.4 FS-7d | 2027-03-01 | 2027-03-12 | 0d |  |
| 4.2 | New HR++ window frames |  | 8d | 2027-05-07 | 2027-05-19 | 4.1 | 2027-03-01 | 2027-03-10 | 0d |  |
| 4.3 | Roof insulation and roofing |  | 8d | 2027-05-20 | 2027-05-31 | 4.2, 3.4 FF+2d | 2027-03-01 | 2027-03-10 | 0d |  |
| 4.4 | Wind and weathertight | milestone | 0d | 2027-05-31 | 2027-05-31 | 4.3 | 2027-03-01 | 2027-03-01 | 55d |  |
| 5 | **5. Building services** |  | 5d | 2027-06-01 | 2027-07-08 |  | 2027-03-01 | 2027-03-05 | 0d |  |
| 5.1 | Renew electrical installation |  | 8d | 2027-06-01 | 2027-06-10 | 4.3 | 2027-03-01 | 2027-03-10 | 0d |  |
| 5.2 | Install heat pump |  | 5d | 2027-06-11 | 2027-06-17 | 5.1 | 2027-03-01 | 2027-03-05 | 27d | 0d |
| 5.3 | Underfloor heating |  | 8d | 2027-06-15 | 2027-06-24 | 5.2 SS+2d | 2027-03-01 | 2027-03-10 | 27d | 0d |
| 5.4 | Heat recovery ventilation |  | 5d | 2027-06-25 | 2027-07-01 | 5.3 | 2027-03-01 | 2027-03-05 | 27d | 0d |
| 5.5 | Solar panels |  | 5d | 2027-07-02 | 2027-07-08 | 5.4 | 2027-03-01 | 2027-03-05 | 27d |  |

| ID | Activity | Type | Duration | Start | Finish | Predecessors | Planned start | Planned finish | Total float |
| --- | --- | --- | --- | --- | --- | --- | --- | --- | --- |
| 6 | **6. Fit-out** |  | 5d | 2027-06-23 | 2027-08-23 |  | 2027-03-01 | 2027-03-05 | 0d |
| 6.1 | Install internal walls |  | 8d | 2027-06-23 | 2027-07-02 | 5.1 SS+16d | 2027-03-01 | 2027-03-10 | 0d |
| 6.2 | Ceilings |  | 5d | 2027-07-05 | 2027-07-09 | 6.1 | 2027-03-01 | 2027-03-05 | 0d |
| 6.3 | Floor finishes |  | 5d | 2027-07-12 | 2027-07-16 | 6.2 | 2027-03-01 | 2027-03-05 | 0d |
| 6.4 | Painting |  | 8d | 2027-07-19 | 2027-08-18 | 6.3 | 2027-03-01 | 2027-03-10 | 0d |
| 6.5 | Sanitary fittings |  | 3d | 2027-08-19 | 2027-08-23 | 6.4 | 2027-03-01 | 2027-03-03 | 0d |
| 7 | **7. Handover** |  | 5d | 2027-08-24 | 2027-09-06 |  | 2027-03-01 | 2027-03-05 | 0d |
| 7.1 | Classroom furnishing |  | 5d | 2027-08-24 | 2027-08-30 | 6.5 | 2027-03-01 | 2027-03-05 | 0d |
| 7.2 | External areas |  | 5d | 2027-08-31 | 2027-09-06 | 7.1 | 2027-03-01 | 2027-03-05 | 0d |
| 7.3 | Handover | milestone | 0d | 2027-09-06 | 2027-09-06 | 7.2 | 2027-03-01 | 2027-03-01 | 0d |
